# Tareas

Schedule from MS Project, 2017-03-24 to 2018-02-26, costs in €.

## Calendars

- Estándar: Mon-Fri 09:00-13:00, 15:00-19:00; Sat-Sun off.

## Resources

| Resource | Rate |
| --- | --- |
| DIRECTOR PROYECTO | 60 |
| INGENIERO AGRONOMO | 48 |
| EXPERTO GIS | 47 |
| ECONOMISTA | 45 |
| SOCIOLOGO | 45 |
| INGENIERO EN MEDIOAMBIENTE | 45 |
| ADMINISTRATIVO | 30 |
| TECNICOS DE APOYO | 35 |

## Schedule

| ID | WBS | Task | Type | Duration | Start | Finish | Predecessors | Total slack | Free slack | Resources | Work | Cost |
| --- | --- | --- | --- | --- | --- | --- | --- | --- | --- | --- | --- | --- |
| 1 | 1 | **TOTAL PROYECTO** |  | 242d | 2017-03-24 | 2018-02-26 |  | 0d |  |  | 7428h | 334,846.8 |
| 2 | 1.1 | **FASE 1: PREPARACION PARA LA FORMULACION** |  | 31d | 2017-03-24 | 2017-05-05 |  | 0d |  |  | 728.4h | 33,630 |
| 3 | 1.1.1 | INICIO | milestone | 0d | 2017-03-24 | 2017-03-24 |  | 0d |  | ADMINISTRATIVO |  |  |
| 4 | 1.1.2 | TERMINOS DE REFERENCIA. Objetivos. Condicionantes del Promotor |  | 10d | 2017-03-24 | 2017-04-06 | 3 | 5d |  | DIRECTOR PROYECTO [25%]; INGENIERO AGRONOMO [25%]; ECONOMISTA [50%]; SOCIOLOGO [25%]; INGENIERO EN MEDIOAMBIENTE [25%] | 120h | 5,760 |
| 5 | 1.1.3 | FINANCIACION |  | 7d | 2017-03-24 | 2017-04-03 | 3 | 8d |  | DIRECTOR PROYECTO [15%]; INGENIERO AGRONOMO [25%]; ECONOMISTA [50%]; SOCIOLOGO [25%] | 64.4h | 3,066 |
| 6 | 1.1.4 | COMITÉ DE COORDINACION. Constitución y organización |  | 5d | 2017-03-24 | 2017-03-30 | 3 | 0d |  | DIRECTOR PROYECTO [25%] | 10h | 600 |
| 7 | 1.1.5 | EQUIPO DE FORMULACION. Recursos humanos y técnicos |  | 15d | 2017-03-31 | 2017-04-20 | 4SS, 6 | 0d |  | DIRECTOR PROYECTO [25%]; ECONOMISTA [20%]; SOCIOLOGO [10%]; INGENIERO EN MEDIOAMBIENTE [10%]; INGENIERO AGRONOMO [10%]; ADMINISTRATIVO [10%] | 102h | 4,896 |
| 8 | 1.1.6 | METODOLOGIA Y PLAN DE TRABAJO |  | 10d | 2017-04-14 | 2017-04-27 | 4, 7FS-5d, 5, 6SS | 0d |  | INGENIERO AGRONOMO [50%]; DIRECTOR PROYECTO [50%]; ECONOMISTA; SOCIOLOGO [50%]; INGENIERO EN MEDIOAMBIENTE [50%]; ADMINISTRATIVO [50%] | 280h | 12,720 |
| 9 | 1.1.7 | DOC. Nº1: Fin P.F. |  | 5d | 2017-04-28 | 2017-05-04 | 8 | 0d |  | DIRECTOR PROYECTO [50%]; ECONOMISTA [50%]; SOCIOLOGO [20%]; INGENIERO EN MEDIOAMBIENTE [20%]; INGENIERO AGRONOMO [20%]; ADMINISTRATIVO | 104h | 4,404 |
| 10 | 1.1.8 | Entrega al PROMOTOR. Doc. nº1 | milestone | 0d | 2017-05-04 | 2017-05-04 | 9 | 0d |  | DIRECTOR PROYECTO [50%] |  |  |
| 11 | 1.1.9 | SEMINARIO DE LANZAMIENTO DEL PROYECTO |  | 1d | 2017-05-05 | 2017-05-05 | 10 | 0d |  | DIRECTOR PROYECTO; ECONOMISTA; SOCIOLOGO; INGENIERO EN MEDIOAMBIENTE; INGENIERO AGRONOMO; ADMINISTRATIVO | 48h | 2,184 |
| 12 | 1.2 | **FASE 2: ANALISIS Y DIAGNOSTICO** |  | 94d | 2017-05-08 | 2017-09-14 |  | 0d |  |  | 3962h | 179,804.8 |
| 13 | 1.2.1 | **ANALISIS ANTECEDENTES** |  | 15d | 2017-05-08 | 2017-05-26 | 11 | 0d |  |  | 315.2h | 14,088 |
| 14 | 1.2.1.1 | POLITICAS Y PROGRAMAS |  | 10d | 2017-05-08 | 2017-05-19 | 11 | 176d | 52d | DIRECTOR PROYECTO [20%]; INGENIERO AGRONOMO [50%]; ECONOMISTA [40%]; ADMINISTRATIVO [20%]; INGENIERO EN MEDIOAMBIENTE [20%] | 120h | 5,520 |
| 15 | 1.2.1.2 | MARCO LEGAL |  | 15d | 2017-05-08 | 2017-05-26 | 11 | 171d | 47d | DIRECTOR PROYECTO [20%]; INGENIERO AGRONOMO [20%]; ADMINISTRATIVO [50%]; ECONOMISTA [40%] | 156h | 6,552 |
| 16 | 1.2.1.3 | BASES DE DATOS EXISTENTES |  | 7d | 2017-05-08 | 2017-05-16 | 11 | 0d |  | DIRECTOR PROYECTO [20%]; INGENIERO AGRONOMO [50%] | 39.2h | 2,016 |
| 17 | 1.2.2 | **ANALISIS DEL AREA DEL PROYECTO** |  | 80d | 2017-05-17 | 2017-09-05 | 11, 16 | 0d |  |  | 2124h | 94,312 |
| 18 | 1.2.2.1 | ANALISIS DE RECURSOS NATURALES. INVENTARIO AMBIENTAL |  | 35d | 2017-05-17 | 2017-07-04 |  | 124d | 0d | INGENIERO EN MEDIOAMBIENTE; INGENIERO AGRONOMO [50%]; ECONOMISTA [40%]; ADMINISTRATIVO [20%]; EXPERTO GIS [50%] | 728h | 32,620 |
| 19 | 1.2.2.2 | INFRAESTRUCTURAS Y SERVICIOS |  | 20d | 2017-07-05 | 2017-08-01 | 18 | 124d | 0d | INGENIERO AGRONOMO; SOCIOLOGO [50%]; DIRECTOR PROYECTO [10%]; ADMINISTRATIVO [25%] | 296h | 13,440 |
| 20 | 1.2.2.3 | ANALISIS DE SECTORES PRODUCTIVOS |  | 25d | 2017-08-02 | 2017-09-05 | 14, 13, 15, 19 | 124d |  | DIRECTOR PROYECTO [20%]; ECONOMISTA; INGENIERO AGRONOMO [50%]; ADMINISTRATIVO [50%] | 440h | 19,200 |
| 21 | 1.2.2.4 | ANALISIS POBLACIONAL |  | 20d | 2017-05-17 | 2017-06-13 |  | 184d |  | SOCIOLOGO; INGENIERO AGRONOMO [25%]; ADMINISTRATIVO [25%] | 240h | 10,320 |
| 22 | 1.2.2.5 | SISTEMA GENERAL TERRITORIAL DE INFORMACION |  | 21d | 2017-05-17 | 2017-06-14 | 16 | 0d |  | SOCIOLOGO; INGENIERO AGRONOMO [25%]; ADMINISTRATIVO [25%]; EXPERTO GIS | 420h | 18,732 |
| 23 | 1.2.3 | **ANALISIS DE AGENTES Y PARTICIPACION** |  | 82d | 2017-05-24 | 2017-09-14 |  | 0d |  |  | 1522.8h | 71,404.8 |
| 24 | 1.2.3.1 | IDENTIFICACIÓN DE AGENTES Y TIPOLOGIA |  | 10d | 2017-05-24 | 2017-06-06 | 22SS+5d | 0d |  | DIRECTOR PROYECTO [50%]; SOCIOLOGO; INGENIERO AGRONOMO [50%]; ADMINISTRATIVO [25%] | 180h | 8,520 |
| 25 | 1.2.3.2 | ANALISIS DE LA PARTICIPACIÓN: ENCUESTA CON LOS AGENTES |  | 60d | 2017-06-07 | 2017-08-29 | 24 | 0d |  | DIRECTOR PROYECTO [50%]; SOCIOLOGO; INGENIERO AGRONOMO [50%]; ADMINISTRATIVO [25%] | 1080h | 51,120 |
| 26 | 1.2.3.3 | TALLER DE PARTICIPACIÓN AGENTES PUBLICOS |  | 1d | 2017-06-21 | 2017-06-21 | 25SS+10d | 43d | 0d | SOCIOLOGO; INGENIERO AGRONOMO [50%]; ADMINISTRATIVO [50%]; DIRECTOR PROYECTO [15%] | 17.2h | 744 |
| 27 | 1.2.3.4 | ANALISIS PROSPECTIVO "SIN" |  | 6d | 2017-06-22 | 2017-06-29 | 26 | 43d |  | INGENIERO AGRONOMO [25%]; ECONOMISTA [50%]; SOCIOLOGO [25%]; INGENIERO EN MEDIOAMBIENTE [25%]; DIRECTOR PROYECTO [15%] | 67.2h | 3,168 |
| 28 | 1.2.3.5 | INFORME DE PARTICIPACION: Problemas, necesidades, oportunidades |  | 10d | 2017-08-30 | 2017-09-12 | 27, 25 | 0d |  | DIRECTOR PROYECTO [30%]; INGENIERO AGRONOMO [25%]; ECONOMISTA [50%]; SOCIOLOGO [25%]; INGENIERO EN MEDIOAMBIENTE [25%]; ADMINISTRATIVO [50%] | 164h | 7,200 |
| 29 | 1.2.3.6 | PRESENTACIÓN Y VALIDACION DE CONCLUSIONES |  | 2d | 2017-09-13 | 2017-09-14 | 28 | 0d |  | DIRECTOR PROYECTO [25%]; INGENIERO AGRONOMO [10%]; ECONOMISTA [20%]; SOCIOLOGO [10%]; ADMINISTRATIVO [25%] | 14.4h | 652.8 |
| 30 | 1.2.4 | CONCLUSIONES Y Doc. Nº2. Presentación al PROMOTOR | milestone | 0d | 2017-09-14 | 2017-09-14 | 29 | 0d |  | DIRECTOR PROYECTO [50%]; INGENIERO AGRONOMO [25%]; ADMINISTRATIVO; ECONOMISTA [50%]; INGENIERO EN MEDIOAMBIENTE [20%] |  |  |
| 31 | 1.2.5 | Doc. nº2. REVISIÓN POR EL PROMOTOR | milestone | 0d | 2017-09-14 | 2017-09-14 | 29, 30 | 0d |  |  |  |  |

| ID | WBS | Task | Type | Duration | Start | Finish | Predecessors | Total slack | Free slack | Resources | Work | Cost |
| --- | --- | --- | --- | --- | --- | --- | --- | --- | --- | --- | --- | --- |
| 32 | 1.3 | **FASE 3: DISEÑO DEL PROYECTO** |  | 92d | 2017-09-15 | 2018-01-22 |  | 0d |  |  | 1152h | 53,532 |
| 33 | 1.3.1 | OBJETIVOS Y METAS |  | 1d | 2017-09-15 | 2017-09-15 | 31 | 0d |  | DIRECTOR PROYECTO; INGENIERO AGRONOMO [50%] | 12h | 672 |
| 34 | 1.3.2 | ALTERNATIVA ESTRATEGICAS: ANÁLISIS Y SELECCIÓN |  | 7d | 2017-09-18 | 2017-09-26 | 33 | 0d |  | DIRECTOR PROYECTO [50%]; INGENIERO AGRONOMO; ECONOMISTA; INGENIERO EN MEDIOAMBIENTE [50%] | 168h | 8,148 |
| 35 | 1.3.3 | FORMULACION DE LOS COMPONENTES |  | 60d | 2017-09-27 | 2017-12-19 | 34 | 0d |  | INGENIERO AGRONOMO [50%]; ECONOMISTA [50%]; INGENIERO EN MEDIOAMBIENTE [50%] | 720h | 33,120 |
| 36 | 1.3.4 | DISEÑO DE LA ORGANIZACIÓN |  | 10d | 2017-12-20 | 2018-01-02 | 35 | 0d |  | INGENIERO AGRONOMO [50%]; ECONOMISTA [50%]; INGENIERO EN MEDIOAMBIENTE [50%] | 120h | 5,520 |
| 37 | 1.3.5 | SISTEMA DE SEGUIMIENTO Y EVALUACION. Programación de la ejecución |  | 7d | 2018-01-03 | 2018-01-11 | 36, 35 | 32d |  | INGENIERO AGRONOMO [50%]; ECONOMISTA [50%]; INGENIERO EN MEDIOAMBIENTE [50%] | 84h | 3,864 |
| 38 | 1.3.6 | PRESUPUESTACION |  | 4d | 2018-01-03 | 2018-01-08 | 35, 36 | 0d |  | INGENIERO AGRONOMO [50%]; ECONOMISTA [50%]; INGENIERO EN MEDIOAMBIENTE [50%] | 48h | 2,208 |
| 39 | 1.3.7 | Doc. Nº 3. Entrega al PROMOTOR | milestone | 0d | 2018-01-08 | 2018-01-08 | 38 | 0d |  | DIRECTOR PROYECTO |  |  |
| 40 | 1.3.8 | Doc. Nº 3. REVISION POR EL PROMOTOR |  | 10d | 2018-01-09 | 2018-01-22 | 39 | 0d |  |  |  |  |
| 41 | 1.4 | **FASE 4: EVALUACION MULTICRITERIO** |  | 15d | 2018-01-23 | 2018-02-12 |  | 0d |  |  | 596h | 27,700 |
| 42 | 1.4.1 | EVALUACION ECONOMICO-FINANCIERA |  | 10d | 2018-01-23 | 2018-02-05 | 40 | 0d |  | DIRECTOR PROYECTO [25%]; INGENIERO AGRONOMO [50%]; ECONOMISTA | 140h | 6,720 |
| 43 | 1.4.2 | EVALUACION SOCIAL Y CULTURAL |  | 10d | 2018-01-23 | 2018-02-05 | 40 | 0d |  | DIRECTOR PROYECTO [25%]; INGENIERO AGRONOMO [50%]; ECONOMISTA [15%]; SOCIOLOGO | 152h | 7,260 |
| 44 | 1.4.3 | EVALUACION AMBIENTAL |  | 10d | 2018-01-23 | 2018-02-05 | 40 | 0d |  | DIRECTOR PROYECTO [25%]; INGENIERO AGRONOMO [50%]; ECONOMISTA [15%]; INGENIERO EN MEDIOAMBIENTE | 152h | 7,260 |
| 45 | 1.4.4 | EVALUACION DE RIESGOS, SEGURIDAD Y SALUD DEL PROYECTO |  | 10d | 2018-01-23 | 2018-02-05 | 40 | 15d | 0d | DIRECTOR PROYECTO [25%]; INGENIERO AGRONOMO [50%]; ECONOMISTA [15%]; TECNICOS DE APOYO | 152h | 6,460 |
| 46 | 1.4.5 | Entrega Doc. nº 4. VIABILIDAD Y SOSTENIBLIDAD | milestone | 0d | 2018-02-05 | 2018-02-05 | 45 | 15d |  |  |  |  |
| 47 | 1.4.6 | Revisión Doc. nº 4 |  | 5d | 2018-02-06 | 2018-02-12 | 42, 43, 44 | 0d |  |  |  |  |
| 48 | 1.5 | **FASE 5: DOCUMENTACION** |  | 10d | 2018-02-13 | 2018-02-26 |  | 0d |  |  | 989.6h | 40,180 |
| 49 | 1.5.1 | MEMORIA |  | 6d | 2018-02-13 | 2018-02-20 | 47 | 4d |  | INGENIERO AGRONOMO [50%]; ECONOMISTA [25%]; DIRECTOR PROYECTO [10%]; TECNICOS DE APOYO | 88.8h | 3,660 |
| 50 | 1.5.2 | ANEJOS A LA MEMORIA |  | 10d | 2018-02-13 | 2018-02-26 | 47 | 0d |  | INGENIERO AGRONOMO [50%]; ECONOMISTA [25%]; DIRECTOR PROYECTO [10%]; INGENIERO EN MEDIOAMBIENTE [50%]; ADMINISTRATIVO [50%]; TECNICOS DE APOYO | 228h | 9,100 |
| 51 | 1.5.3 | PLANOS |  | 10d | 2018-02-13 | 2018-02-26 | 47 | 0d |  | INGENIERO AGRONOMO [50%]; ECONOMISTA [25%]; DIRECTOR PROYECTO [10%]; INGENIERO EN MEDIOAMBIENTE [50%]; ADMINISTRATIVO [50%]; TECNICOS DE APOYO; EXPERTO GIS | 308h | 12,860 |
| 52 | 1.5.4 | PLIEGO DE CONDICIONES |  | 3d | 2018-02-13 | 2018-02-15 | 47 | 7d |  | INGENIERO AGRONOMO [50%]; ECONOMISTA [25%]; DIRECTOR PROYECTO [10%]; INGENIERO EN MEDIOAMBIENTE [50%]; ADMINISTRATIVO [50%]; TECNICOS DE APOYO | 68.4h | 2,730 |
| 53 | 1.5.5 | PRESUPUESTO |  | 3d | 2018-02-13 | 2018-02-15 | 47 | 7d |  | ECONOMISTA [25%]; INGENIERO AGRONOMO [50%]; DIRECTOR PROYECTO [10%]; INGENIERO EN MEDIOAMBIENTE [50%]; ADMINISTRATIVO [50%]; TECNICOS DE APOYO | 68.4h | 2,730 |
| 54 | 1.5.6 | ESTUDIO DE SEGURIDAD Y SALUD |  | 10d | 2018-02-13 | 2018-02-26 | 47 | 0d |  | INGENIERO AGRONOMO [50%]; ECONOMISTA [25%]; DIRECTOR PROYECTO [10%]; INGENIERO EN MEDIOAMBIENTE [50%]; ADMINISTRATIVO [50%]; TECNICOS DE APOYO | 228h | 9,100 |
| 55 | 1.5.7 | Entrega del proyecto | milestone | 0d | 2018-02-26 | 2018-02-26 | 54, 49, 50, 51, 52, 53 | 0d |  |  |  |  |
